# Delivery-Launch-Plan.xml

Schedule from MS Project XML, 2026-09-20 to 2027-02-02.

## Schedule

| ID | WBS | Task | Type | Duration | Start | Finish | Predecessors | Total slack | Free slack |
| --- | --- | --- | --- | --- | --- | --- | --- | --- | --- |
| 1 | 1 | **Phase 0: Foundation & Company Setup** |  | 7d | 2026-09-20 | 2026-09-28 |  | 91d |  |
| 2 | 1.1 | Finalize legal entity & commercial registration |  | 7d | 2026-09-20 | 2026-09-28 |  | 91d |  |
| 3 | 1.2 | Open corporate bank account |  | 3d | 2026-09-20 | 2026-09-22 |  | 95d |  |
| 4 | 1.3 | Engage accountant & legal advisor |  | 1d | 2026-09-20 | 2026-09-20 |  | 97d |  |
| 5 | 1.4 | Shortlist & evaluate white-label platform vendors |  | 3d | 2026-09-20 | 2026-09-22 |  | 95d |  |
| 6 | 2 | **Phase 1: SyTRA Track A Submission (Delivery License)** |  | 73d | 2026-09-20 | 2026-12-29 |  | 0d |  |
| 7 | 2.1 | Finalize feasibility study, tariff & data-protection docs with company details |  | 5d | 2026-09-20 | 2026-09-24 |  | 0d |  |
| 8 | 2.2 | Gather signatory docs, ID copies, criminal record clearances |  | 5d | 2026-09-20 | 2026-09-24 |  | 0d |  |
| 9 | 2.3 | Complete SyTRA license application form |  | 1d | 2026-09-27 | 2026-09-27 | 7, 8 | 0d |  |
| 10 | 2.4 | Pay application review fee |  | 1d | 2026-09-28 | 2026-09-28 | 9 | 0d |  |
| 11 | 2.5 | MILESTONE: Submit Track A application to SyTRA | milestone | 0d | 2026-09-28 | 2026-09-28 | 10 | 0d |  |
| 12 | 2.6 | SyTRA acknowledgment period (up to 15 business days) |  | 15d | 2026-09-29 | 2026-10-19 | 11 | 0d |  |
| 13 | 2.7 | SyTRA review & decision period (up to 45 business days) |  | 45d | 2026-10-20 | 2026-12-21 | 12 | 0d |  |
| 14 | 2.8 | MILESTONE: SyTRA preliminary approval received | milestone | 0d | 2026-12-21 | 2026-12-21 | 13 | 0d |  |
| 15 | 2.9 | Complete final requirements & pay initial license fee |  | 6d | 2026-12-22 | 2026-12-29 | 14 | 25d | 0d |
| 16 | 2.10 | MILESTONE: SyTRA License Granted | milestone | 0d | 2026-12-29 | 2026-12-29 | 15 | 25d |  |
| 17 | 3 | **Phase 2: White-Label Platform Setup** |  | 40d | 2026-09-20 | 2026-11-12 |  | 23d |  |
| 18 | 3.1 | Brand configuration (logo, colors, app name) |  | 7d | 2026-09-20 | 2026-09-28 |  | 23d | 0d |
| 19 | 3.2 | Set up local hosting within Syria (SyTRA requirement) |  | 3d | 2026-09-20 | 2026-09-22 |  | 27d | 4d |
| 20 | 3.3 | Platform Installation |  | 3d | 2026-09-29 | 2026-10-01 | 18, 19 | 23d | 0d |
| 21 | 3.4 | Configure commission & delivery-fee rules |  | 2d | 2026-10-04 | 2026-10-05 | 20 | 51d | 28d |
| 22 | 3.5 | Integrate payment gateway |  | 7d | 2026-10-04 | 2026-10-12 | 20 | 46d | 23d |
| 23 | 3.6 | Configure SMS verification & security settings |  | 2d | 2026-10-04 | 2026-10-05 | 20 | 51d | 28d |
| 24 | 3.7 | Internal QA testing of full app flow |  | 30d | 2026-10-04 | 2026-11-12 | 20 | 23d | 0d |
| 25 | 3.8 | Google Play Store & Apple App Store |  | 21d | 2026-10-04 | 2026-11-01 | 24SS | 32d | 9d |
| 26 | 3.9 | MILESTONE: Platform Ready for Testing | milestone | 0d | 2026-11-12 | 2026-11-12 | 21, 22, 23, 24, 25 | 23d | 0d |

| ID | WBS | Task | Type | Duration | Start | Finish | Predecessors | Total slack | Free slack |
| --- | --- | --- | --- | --- | --- | --- | --- | --- | --- |
| 27 | 4 | **Phase 3: Hiring & Operations Setup** |  | 88d | 2026-09-20 | 2027-01-19 |  | 10d |  |
| 28 | 4.1 | Lease office space |  | 14d | 2026-09-20 | 2026-10-07 |  | 67d | 43d |
| 29 | 4.2 | Lease bike storage/warehouse space |  | 14d | 2026-09-20 | 2026-10-07 |  | 67d | 43d |
| 30 | 4.3 | Procure office equipment |  | 7d | 2026-12-22 | 2026-12-30 | 28FS+10d, 14 | 24d | 14d |
| 31 | 4.4 | Procure bike-storage equipment |  | 7d | 2026-12-22 | 2026-12-30 | 29FS+10d, 14 | 24d | 14d |
| 32 | 4.5 | Procure bikes (40 units) |  | 14d | 2026-12-22 | 2027-01-10 | 14 | 17d | 7d |
| 33 | 4.6 | Procure mobile phones & POS devices |  | 14d | 2026-12-22 | 2027-01-10 | 14 | 17d | 7d |
| 34 | 4.7 | Hire Store Mechanics |  | 3d | 2026-12-22 | 2026-12-24 | 14 | 28d | 18d |
| 35 | 4.8 | Hire Support staff (2) |  | 5d | 2026-12-22 | 2026-12-28 | 14 | 26d | 16d |
| 36 | 4.9 | Hire Marketing staff (2) |  | 5d | 2026-12-22 | 2026-12-28 | 14 | 26d | 16d |
| 37 | 4.10 | Hire Accountant (2) |  | 5d | 2026-12-22 | 2026-12-28 | 14 | 26d | 16d |
| 38 | 4.11 | Recruit riders (target 40) |  | 14d | 2026-12-22 | 2027-01-10 | 14 | 10d | 0d |
| 39 | 4.12 | Rider onboarding: safety procedures & app training |  | 7d | 2027-01-11 | 2027-01-19 | 38 | 10d | 0d |
| 40 | 4.13 | MILESTONE: Operations Team & Fleet Ready | milestone | 0d | 2027-01-19 | 2027-01-19 | 28, 29, 30, 31, 32, 33, 34, 35, 36, 37, 38, 39 | 10d |  |
| 41 | 5 | **Phase 4: Compliance Finalization (App Accreditation)** |  | 25d | 2026-11-15 | 2026-12-17 |  | 33d |  |
| 42 | 5.1 | Prepare Track B (App Accreditation) documents |  | 7d | 2026-11-15 | 2026-11-23 | 26 | 33d | 0d |
| 43 | 5.2 | Conduct security penetration test on configured app |  | 7d | 2026-11-15 | 2026-11-23 | 26 | 33d | 0d |
| 44 | 5.3 | Obtain pentest certificate from accredited security firm |  | 7d | 2026-11-15 | 2026-11-23 | 26 | 33d | 0d |
| 45 | 5.4 | Finalize bilingual privacy policy & terms of use |  | 3d | 2026-11-15 | 2026-11-17 | 26 | 37d | 4d |
| 46 | 5.5 | Sign required regulatory pledges (SSL, info-security policy) |  | 3d | 2026-11-15 | 2026-11-17 | 26 | 37d | 4d |
| 47 | 5.6 | MILESTONE: Submit Track B application | milestone | 0d | 2026-11-23 | 2026-11-23 | 42, 43, 44, 45, 46 | 33d | 0d |
| 48 | 5.7 | Track B accreditation review period |  | 18d | 2026-11-24 | 2026-12-17 | 47 | 33d | 0d |
| 49 | 5.8 | MILESTONE: App Accreditation Granted | milestone | 0d | 2026-12-17 | 2026-12-17 | 48 | 33d |  |
| 50 | 6 | **Phase 5: SyTRA Decision & Pre-Launch** |  | 51d | 2026-11-15 | 2027-01-24 |  | 7d |  |
| 51 | 6.1 | Notify SyTRA of intended commercial launch date |  | 1d | 2026-12-22 | 2026-12-22 | 14 | 0d |  |
| 52 | 6.2 | Soft launch / pilot testing with limited riders |  | 30d | 2026-11-15 | 2026-12-24 | 26 | 23d | 0d |
| 53 | 6.3 | Marketing campaign launch prep |  | 14d | 2027-01-05 | 2027-01-24 | 56SS-21d | 7d |  |
| 54 | 6.4 | Address pilot feedback & fixes |  | 5d | 2026-12-27 | 2026-12-31 | 52 | 23d |  |

| ID | WBS | Task | Type | Duration | Start | Finish | Predecessors | Total slack |
| --- | --- | --- | --- | --- | --- | --- | --- | --- |
| 55 | 7 | **Phase 6: Commercial Launch** |  | 0d | 2027-02-02 | 2027-02-02 |  | 0d |
| 56 | 7.1 | MILESTONE: Commercial Launch (Aleppo) | milestone | 0d | 2027-02-02 | 2027-02-02 | 51FS+3d, 1, 6, 17, 27, 41 | 0d |
